# Demo Data Centre Fit-Out

How a schedule from Primavera P6 changed from version to version. A marks actual dates.

## Version 1 (data date 2026-03-02, saved 2026-08-18)

Note of the change: chore: package for open-sourcing — docs, license, sample data

| ID | WBS | Task | Duration | Start | Finish | Predecessors | Complete | Total float | Constraint |
| --- | --- | --- | --- | --- | --- | --- | --- | --- | --- |
|  | MS | **Project Milestones** |  | 2026-01-21 | 2026-08-24 |  |  |  |  |
| MS-010 |  | Notice to Proceed | 0d | 2026-01-21 A | 2026-01-21 A |  | 100% |  |  |
| MS-020 |  | Power-on | 0d | 2026-07-28 | 2026-07-28 | CX-030 |  | 0d |  |
| MS-030 |  | Practical Completion | 0d | 2026-08-24 | 2026-08-24 | CX-040 |  | 0d | finish on or before 2026-08-19 |
|  | EW | **Enabling Works** |  | 2026-01-21 | 2026-02-28 |  |  |  |  |
| EW-010 |  | Site establishment & hoarding | 10d | 2026-01-21 A | 2026-01-31 A | MS-010 | 100% |  |  |
| EW-020 |  | Strip-out of existing services | 15d | 2026-01-31 A | 2026-02-15 A | EW-010 | 100% |  |  |
| EW-030 |  | Builders-work openings | 10d | 2026-02-18 A | 2026-02-28 | EW-020 | 60% | 10d |  |
|  | ST | **Structure & Envelope** |  | 2026-02-22 | 2026-04-04 |  |  |  |  |
| ST-010 |  | Structural steel platform | 20d | 2026-02-22 A | 2026-03-14 | EW-030 | 30% | 0d |  |
| ST-020 |  | Roof penetrations & weatherproofing | 10d | 2026-03-16 | 2026-03-26 | ST-010 |  | 0d |  |
| ST-030 |  | Plant deck screed | 5d | 2026-03-30 | 2026-04-04 | ST-020 |  | 0d |  |
|  | MEP | **MEP Installation** |  | 2026-02-10 | 2026-06-25 |  |  |  |  |
| MEP-010 |  | Chiller procurement (16-wk lead) | 80d | 2026-02-10 A | 2026-05-01 |  | 25% | 10d |  |
| MEP-020 |  | CRAC unit procurement | 60d | 2026-03-02 | 2026-05-01 |  |  | 10d |  |
| MEP-030 |  | Pipework first fix | 20d | 2026-04-06 | 2026-04-26 | ST-010 FS+5d |  | 10d |  |
| MEP-040 |  | Electrical containment | 15d | 2026-04-06 | 2026-04-21 | ST-010 FS+5d |  | 10d |  |
| MEP-070 |  | LV switchboard installation | 15d | 2026-04-26 | 2026-05-11 | MEP-040 |  | 10d |  |
| MEP-060 |  | CRAC installation | 10d | 2026-05-03 | 2026-05-13 | MEP-020, MEP-030 |  | 10d |  |
| MEP-080 |  | Cabling & terminations | 25d | 2026-05-13 | 2026-06-07 | MEP-060 SS+5d, MEP-070 |  | 10d |  |
| MEP-050 |  | Chiller installation & rigging | 10d | 2026-06-15 | 2026-06-25 | ST-030, MEP-010 |  | 0d |  |
|  | FIT | **Fit-Out & Finishes** |  | 2026-04-13 | 2026-05-31 |  |  |  |  |
| FIT-010 |  | Raised access floor | 15d | 2026-04-13 | 2026-04-28 | EW-030 |  | 10d |  |
| FIT-020 |  | Partitions & fire-stopping | 20d | 2026-04-21 | 2026-05-11 | FIT-010 SS+5d |  | 10d |  |
| FIT-030 |  | Ceilings & finishes | 15d | 2026-05-16 | 2026-05-31 | FIT-020 |  | 10d |  |
|  | CX | **Commissioning** |  | 2026-06-28 | 2026-08-19 |  |  |  |  |
| CX-010 |  | Pre-commissioning inspections | 10d | 2026-06-28 | 2026-07-08 | MEP-050, MEP-080, FIT-030 |  | 0d |  |
| CX-020 |  | L3 component commissioning | 15d | 2026-07-08 | 2026-07-23 | CX-010 |  | 0d |  |
| CX-030 |  | L4 integrated systems test | 10d | 2026-07-28 | 2026-08-07 | CX-020 |  | 0d |  |
| CX-040 |  | L5 IST & client witness | 10d | 2026-08-09 | 2026-08-19 | CX-030 |  | -1d | finish on or before 2026-08-21 |

## Version 2 (data date 2026-03-02, saved 2026-08-18)

Note of the change: Sample schedule: dates regenerated with a real CPM pass

Last finish 2026-08-24 → 2026-09-09 (+16d).

Changed:

| ID | Task | Start | Finish | Total float | Other |
| --- | --- | --- | --- | --- | --- |
| MS | **Project Milestones** |  | 2026-08-24 → 2026-09-09 (+16d) |  |  |
| MS-020 | Power-on | 2026-07-28 → 2026-08-26 (+29d) | 2026-07-28 → 2026-08-26 (+29d) | 0d → 10d |  |
| MS-030 | Practical Completion | 2026-08-24 → 2026-09-09 (+16d) | 2026-08-24 → 2026-09-09 (+16d) | 0d → -1d | constraint finish on or before 2026-08-19 → finish on or before 2026-09-08 |
| EW | **Enabling Works** |  | 2026-02-28 → 2026-03-05 (+5d) |  |  |
| EW-010 | Site establishment & hoarding |  | 2026-01-31 A → 2026-02-03 A (+3d) |  |  |
| EW-020 | Strip-out of existing services | 2026-01-31 A → 2026-02-04 A (+4d) | 2026-02-15 A → 2026-02-24 A (+9d) |  |  |
| EW-030 | Builders-work openings |  | 2026-02-28 → 2026-03-05 (+5d) | 10d → 11d |  |
| ST | **Structure & Envelope** | 2026-02-22 → 2026-02-23 (+1d) | 2026-04-04 → 2026-04-10 (+6d) |  |  |
| ST-010 | Structural steel platform | 2026-02-22 A → 2026-02-23 A (+1d) | 2026-03-14 → 2026-03-19 (+5d) | 0d → 15d |  |
| ST-020 | Roof penetrations & weatherproofing | 2026-03-16 → 2026-03-20 (+4d) | 2026-03-26 → 2026-04-02 (+7d) | 0d → 50d |  |
| ST-030 | Plant deck screed | 2026-03-30 → 2026-04-06 (+7d) | 2026-04-04 → 2026-04-10 (+6d) | 0d → 50d |  |
| MEP | **MEP Installation** |  | 2026-06-25 → 2026-07-07 (+12d) |  |  |
| MEP-010 | Chiller procurement (16-wk lead) |  | 2026-05-01 → 2026-05-26 (+25d) | 10d → 19d |  |
| MEP-020 | CRAC unit procurement |  | 2026-05-01 → 2026-05-26 (+25d) | 10d → -1d |  |
| MEP-030 | Pipework first fix | 2026-04-06 → 2026-03-27 (-10d) | 2026-04-26 → 2026-04-24 (-2d) | 10d → 20d |  |
| MEP-040 | Electrical containment | 2026-04-06 → 2026-03-27 (-10d) | 2026-04-21 → 2026-04-17 (-4d) | 10d → 15d |  |
| MEP-070 | LV switchboard installation | 2026-04-26 → 2026-04-20 (-6d) |  | 10d → 15d |  |
| MEP-050 | Chiller installation & rigging | 2026-06-15 → 2026-05-27 (-19d) | 2026-06-25 → 2026-06-09 (-16d) | 0d → 19d |  |
| MEP-060 | CRAC installation | 2026-05-03 → 2026-05-27 (+24d) | 2026-05-13 → 2026-06-09 (+27d) | 10d → -1d |  |
| MEP-080 | Cabling & terminations | 2026-05-13 → 2026-06-03 (+21d) | 2026-06-07 → 2026-07-07 (+30d) | 10d → -1d |  |
| FIT | **Fit-Out & Finishes** | 2026-04-13 → 2026-03-06 (-38d) | 2026-05-31 → 2026-05-04 (-27d) |  |  |
| FIT-010 | Raised access floor | 2026-04-13 → 2026-03-06 (-38d) | 2026-04-28 → 2026-03-26 (-33d) | 10d → 45d |  |
| FIT-020 | Partitions & fire-stopping | 2026-04-21 → 2026-03-13 (-39d) | 2026-05-11 → 2026-04-10 (-31d) | 10d → 45d |  |
| FIT-030 | Ceilings & finishes | 2026-05-16 → 2026-04-13 (-33d) | 2026-05-31 → 2026-05-04 (-27d) | 10d → 45d |  |
| CX | **Commissioning** | 2026-06-28 → 2026-07-08 (+10d) | 2026-08-19 → 2026-09-08 (+20d) |  |  |
| CX-010 | Pre-commissioning inspections | 2026-06-28 → 2026-07-08 (+10d) | 2026-07-08 → 2026-07-21 (+13d) | 0d → -1d |  |
| CX-020 | L3 component commissioning | 2026-07-08 → 2026-07-22 (+14d) | 2026-07-23 → 2026-08-11 (+19d) | 0d → -1d |  |
| CX-030 | L4 integrated systems test | 2026-07-28 → 2026-08-12 (+15d) | 2026-08-07 → 2026-08-25 (+18d) | 0d → -1d |  |
| CX-040 | L5 IST & client witness | 2026-08-09 → 2026-08-26 (+17d) | 2026-08-19 → 2026-09-08 (+20d) |  | constraint finish on or before 2026-08-21 → finish on or before 2026-09-15 |

## Version 3 (data date 2026-03-02, saved 2026-08-18)

Note of the change: Sample: no open ends, no negative float; Gantt link scope toggle

Last finish stays 2026-09-09.

Changed:

| ID | Task | Total float | Predecessors | Other |
| --- | --- | --- | --- | --- |
| MS-030 | Practical Completion | -1d → 0d |  | constraint finish on or before 2026-09-08 → finish on or before 2026-09-09 |
| MEP-010 | Chiller procurement (16-wk lead) | 19d → 20d | none → MS-010 |  |
| MEP-020 | CRAC unit procurement | -1d → 0d | none → MS-010 |  |
| CX-040 | L5 IST & client witness | -1d → 0d | CX-030 → CX-030, MS-020 |  |
